# 宜昌奥体中心

Schedule from MS Project, 2013-10-30 to 2016-02-13.

## Calendars

- 宜昌奥体中心日历: Mon-Sun 08:00-12:00, 13:00-17:00. Exceptions (off unless hours are given): 2014-01-30 to 2014-02-05 (春节).

## Resources

| Resource |
| --- |
| 城投公司 |
| 中波台 |
| 建安施工单位 |
| 专项实施单位 |
| 设计院 |
| 夷陵区 |
| 审图办 |
| 规划局 |
| 发改委 |
| 测绘大队 |
| 地勘单位 |
| 招标代理公司 |

## Schedule

| ID | WBS | Task | Type | Duration | Start | Finish | Predecessors | Total slack | Free slack | Constraint | modeloMap | backendMap |
| --- | --- | --- | --- | --- | --- | --- | --- | --- | --- | --- | --- | --- |
| 1 | 1 | **体育馆工程** |  | 830d? | 2013-10-30 | 2016-02-13 |  | 0d |  |  | nice |  |
| 2 | 1.1 | **体育馆工程实体** |  | 830d? | 2013-10-30 | 2016-02-13 |  | 0d |  |  |  |  |
| 3 | 1.1.1 | **施工准备** |  | 81d | 2013-10-30 | 2014-01-18 |  | 749d |  |  |  |  |
| 4 | 1.1.1.1 | 施工用水 |  | 30d | 2013-12-05 | 2014-01-03 |  | 764d |  | start no earlier than 2013-12-05 |  |  |
| 5 | 1.1.1.2 | 施工用电 |  | 40d | 2013-12-10 | 2014-01-18 |  | 749d |  | start no earlier than 2013-12-10 |  |  |
| 6 | 1.1.1.3 | 测量放线 |  | 10d | 2013-12-31 | 2014-01-09 | 8 | 758d |  | start no earlier than 2013-12-31 |  |  |
| 7 | 1.1.1.4 | 大临设施 |  | 30d | 2013-10-30 | 2013-11-28 |  | 800d |  |  |  |  |
| 8 | 1.1.2 | 土石方工程 |  | 60d | 2013-10-30 | 2013-12-28 |  | 760d | 2d |  |  |  |
| 9 | 1.1.3 | 主体育馆开工 | milestone | 1d? | 2013-12-15 | 2013-12-15 |  | 783d |  | start no earlier than 2013-12-15 |  |  |
| 10 | 1.1.4 | **桩基础** |  | 125d | 2013-11-20 | 2014-03-31 |  | 239d |  |  |  |  |
| 11 | 1.1.4.1 | 试桩及检测 |  | 45d | 2013-11-20 | 2014-01-03 |  | 764d |  | start no earlier than 2013-11-20 | 智障儿童欢乐多 | Just do it |
| 12 | 1.1.4.2 | 桩基施工 |  | 100d | 2013-12-15 | 2014-03-31 |  | 214d | 0d | start no earlier than 2013-12-15 |  |  |
| 13 | 1.1.5 | 主体结构(含承台） |  | 230d | 2014-04-01 | 2014-11-16 | 12 | 214d | 0d |  |  |  |
| 14 | 1.1.6 | 钢结构 |  | 300d | 2014-05-15 | 2015-03-10 |  | 190d | 0d | start no earlier than 2014-05-15 |  |  |
| 15 | 1.1.7 | 钢结构开始吊装 | milestone | 1d? | 2014-09-10 | 2014-09-10 |  | 521d |  | start no earlier than 2014-09-10 |  |  |
| 16 | 1.1.8 | 屋面板 |  | 150d | 2015-03-11 | 2015-08-07 | 14 | 190d |  | start no earlier than 2015-03-11 |  |  |
| 17 | 1.1.9 | 主体育馆封顶 | milestone | 1d? | 2015-02-08 | 2015-02-08 |  | 370d |  | start no earlier than 2015-02-07 |  |  |
| 18 | 1.1.10 | **水电风安装** |  | 320d | 2014-07-20 | 2015-06-04 |  | 254d |  |  |  |  |
| 19 | 1.1.10.1 | 电气工程 |  | 320d | 2014-07-20 | 2015-06-04 |  | 254d |  | start no earlier than 2014-07-20 |  |  |
| 20 | 1.1.10.2 | 暖通工程 |  | 320d | 2014-07-20 | 2015-06-04 |  | 254d |  | start no earlier than 2014-07-20 |  |  |
| 21 | 1.1.10.3 | 给排水工程 |  | 320d | 2014-07-20 | 2015-06-04 |  | 254d |  | start no earlier than 2014-07-20 |  |  |
| 22 | 1.1.11 | **弱电智能化系统** |  | 240d | 2014-08-05 | 2015-04-01 |  | 318d |  |  |  |  |
| 23 | 1.1.11.1 | 安保及电视监控系统 |  | 240d | 2014-08-05 | 2015-04-01 |  | 318d |  | start no earlier than 2014-08-05 |  |  |
| 24 | 1.1.11.2 | 综合布线及网络系统 |  | 240d | 2014-08-05 | 2015-04-01 |  | 318d |  | start no earlier than 2014-08-05 |  |  |
| 25 | 1.1.11.3 | 体育智能化通信信息管理系统 |  | 240d | 2014-08-05 | 2015-04-01 |  | 318d |  | start no earlier than 2014-08-05 |  |  |

Notes:
- 11: "name":"shizhuang","level":"y.t.t.z"

| ID | WBS | Task | Type | Duration | Start | Finish | Predecessors | Total slack | Free slack | Constraint |
| --- | --- | --- | --- | --- | --- | --- | --- | --- | --- | --- |
| 26 | 1.1.12 | **体育工艺** |  | 150d | 2014-11-17 | 2015-04-15 |  | 304d |  |  |
| 27 | 1.1.12.1 | 木地板 |  | 150d | 2014-11-17 | 2015-04-15 | 13 | 304d |  |  |
| 28 | 1.1.12.2 | 看台座椅 |  | 150d | 2014-11-17 | 2015-04-15 | 13 | 304d |  |  |
| 29 | 1.1.13 | 幕墙工程 |  | 240d | 2014-11-17 | 2015-07-14 | 13 | 214d |  |  |
| 30 | 1.1.14 | **装饰工程及功能** |  | 271d | 2014-10-20 | 2015-07-17 |  | 1d | 0d |  |
| 31 | 1.1.14.1 | 精装修 |  | 240d | 2014-10-20 | 2015-06-16 |  | 32d |  | start no earlier than 2014-10-20 |
| 32 | 1.1.14.2 | 球场音响 |  | 200d | 2014-10-30 | 2015-05-17 |  | 62d |  | start no earlier than 2014-10-30 |
| 33 | 1.1.14.3 | 球场照明 |  | 200d | 2014-10-30 | 2015-05-17 |  | 62d |  | start no earlier than 2014-10-30 |
| 34 | 1.1.14.4 | LED显示屏 |  | 200d | 2014-10-30 | 2015-05-17 |  | 62d |  | start no earlier than 2014-10-30 |
| 35 | 1.1.14.5 | 标识标牌 |  | 200d | 2014-12-30 | 2015-07-17 |  | 1d |  | start no earlier than 2014-12-30 |
| 36 | 1.1.15 | 电梯工程 |  | 200d | 2014-10-30 | 2015-05-17 |  | 272d |  | start no earlier than 2014-10-30 |
| 37 | 1.1.16 | 消防工程 |  | 200d | 2014-09-05 | 2015-03-23 |  | 327d |  | start no earlier than 2014-09-05 |
| 38 | 1.1.17 | 其他 |  | 150d | 2015-07-18 | 2015-12-14 | 30 | 1d | 0d | start no earlier than 2014-05-30 |
| 39 | 1.1.18 | 系统检测及验收 |  | 60d | 2015-12-15 | 2016-02-12 | 38 | 1d |  |  |
| 40 | 1.1.19 | 主体育馆完工 | milestone | 1d? | 2016-02-13 | 2016-02-13 |  | 0d |  | start no earlier than 2016-02-12 |
| 41 | 1.2 | **相关咨询服务** |  | 436d | 2013-10-30 | 2015-01-15 |  | 394d |  |  |
| 42 | 1.2.1 | 地质勘查 |  | 12d | 2013-10-30 | 2013-11-10 |  | 818d |  | start no earlier than 2013-10-30 |
| 43 | 1.2.2 | **工程设计** |  | 184d | 2013-10-30 | 2014-05-08 |  | 646d |  |  |
| 44 | 1.2.2.1 | 初步设计 |  | 37d | 2013-10-30 | 2013-12-05 |  | 793d |  |  |
| 45 | 1.2.2.2 | 施工图设计 |  | 60d | 2013-11-17 | 2014-01-15 |  | 752d |  | start no earlier than 2013-11-17 |
| 46 | 1.2.2.3 | 精装修设计 |  | 60d | 2014-03-10 | 2014-05-08 |  | 646d |  | start no earlier than 2014-03-10 |
| 47 | 1.2.3 | **招标采购** |  | 436d | 2013-10-30 | 2015-01-15 |  | 394d |  |  |
| 48 | 1.2.3.1 | **施工单位** |  | 436d | 2013-10-30 | 2015-01-15 |  | 394d |  |  |
| 49 | 1.2.3.1.1 | 施工用水 |  | 9d | 2013-11-15 | 2013-11-23 |  | 805d |  | start no earlier than 2013-11-15 |
| 50 | 1.2.3.1.2 | 施工用电 |  | 9d | 2013-11-15 | 2013-11-23 |  | 805d |  | start no earlier than 2013-11-15 |
| 51 | 1.2.3.1.3 | 土石方施工单位 |  | 2d | 2013-10-30 | 2013-10-31 |  | 828d |  | start no earlier than 2013-10-30 |
| 52 | 1.2.3.1.4 | 试桩及检测 |  | 8d | 2013-11-13 | 2013-11-20 |  | 808d |  | finish no earlier than 2013-11-20 |
| 53 | 1.2.3.1.5 | 桩基础 |  | 30d | 2013-11-15 | 2013-12-14 |  | 784d |  | start no earlier than 2013-11-15 |
| 54 | 1.2.3.1.6 | 主体结构及水电风安装（总包） |  | 60d | 2014-01-10 | 2014-03-17 |  | 698d |  | finish no earlier than 2014-03-17 |
| 55 | 1.2.3.1.7 | 钢结构及屋面板 |  | 60d | 2014-02-15 | 2014-04-15 |  | 669d |  | finish no earlier than 2014-04-15 |
| 56 | 1.2.3.1.8 | 装饰工程 |  | 40d | 2014-07-12 | 2014-08-20 |  | 542d |  | finish no earlier than 2014-08-20 |
| 57 | 1.2.3.1.9 | 安保及电视监控系统 |  | 50d | 2014-05-17 | 2014-07-05 |  | 588d |  | finish no earlier than 2014-07-05 |
| 58 | 1.2.3.1.10 | 综合布线及网络系统 |  | 50d | 2014-05-17 | 2014-07-05 |  | 588d |  | finish no earlier than 2014-07-05 |
| 59 | 1.2.3.1.11 | 电梯工程 |  | 60d | 2014-08-02 | 2014-09-30 |  | 501d |  | finish no earlier than 2014-09-30 |
| 60 | 1.2.3.1.12 | 场馆照明 |  | 60d | 2014-11-17 | 2015-01-15 | 13 | 394d |  | finish no earlier than 2014-09-30 |
| 61 | 1.2.3.1.13 | 音响系统 |  | 60d | 2014-11-17 | 2015-01-15 | 13 | 394d |  | finish no earlier than 2014-09-30 |
| 62 | 1.2.3.1.14 | LED屏显示系统 |  | 60d | 2014-11-17 | 2015-01-15 | 13 | 394d |  | finish no earlier than 2014-09-30 |
| 63 | 1.2.3.1.15 | 体育馆木地板 |  | 40d | 2014-11-17 | 2014-12-26 | 13 | 414d |  | finish no earlier than 2014-08-24 |
| 64 | 1.2.3.1.16 | 体育馆看台座椅 |  | 40d | 2014-11-17 | 2014-12-26 | 13 | 414d |  | finish no earlier than 2014-08-24 |
| 65 | 1.2.3.1.17 | 幕墙工程 |  | 60d | 2014-11-17 | 2015-01-15 | 13 | 394d |  | finish no earlier than 2014-08-24 |
| 66 | 1.2.3.1.18 | 消防工程 |  | 50d | 2014-06-17 | 2014-08-05 |  | 557d |  | finish no earlier than 2014-08-05 |
| 67 | 1.2.3.1.19 | 标识标牌 |  | 60d | 2014-11-17 | 2015-01-15 | 13 | 394d |  | finish no earlier than 2014-11-30 |

| ID | WBS | Task | Duration | Start | Finish | Total slack | Constraint |
| --- | --- | --- | --- | --- | --- | --- | --- |
| 68 | 1.2.3.2 | **材料采购** | 80d | 2014-04-30 | 2014-07-18 | 575d |  |
| 69 | 1.2.3.2.1 | 高低压配电柜 | 80d | 2014-04-30 | 2014-07-18 | 575d | start no earlier than 2014-04-30 |
| 70 | 1.2.3.2.2 | 柴油发电机组 | 80d | 2014-04-30 | 2014-07-18 | 575d | start no earlier than 2014-04-30 |
| 71 | 1.2.3.2.3 | 冷却塔 | 80d | 2014-04-30 | 2014-07-18 | 575d | start no earlier than 2014-04-30 |
| 72 | 1.2.3.2.4 | 空调机组 | 80d | 2014-04-30 | 2014-07-18 | 575d | start no earlier than 2014-04-30 |
| 73 | 1.2.3.3 | 其他零星采购 | 90d | 2014-04-30 | 2014-07-28 | 565d | start no earlier than 2014-04-30 |
